# Hardboard phase 1 1-2-15

Schedule from MS Project, 2015-05-18 to 2015-09-16, status date 2015-05-20, costs in $, A marks actual dates.

## Calendars

- Student Calendar: Mon-Fri 08:00-12:00, 13:00-17:00; Sat-Sun off. Exceptions (off unless hours are given): 2015-08-07 to 2015-08-12 (Honeymoon).

## Resources

| Resource | Group | Rate |
| --- | --- | --- |
| Brandon | Developer | 20 |

## Schedule

| ID | WBS | Task | Duration | Start | Finish | Predecessors | Complete | Remaining | Total slack | Free slack | Resources | Work | Actual work | Cost | Actual cost | Total Hours Worked |
| --- | --- | --- | --- | --- | --- | --- | --- | --- | --- | --- | --- | --- | --- | --- | --- | --- |
| 1 | 1 | **Hardboard Phase 3** | 71.88d? | 2015-05-18 A | 2015-09-16 |  | 7% | 66.56d? | 0d |  |  | 575h | 42.5h | 8,840 | 850 |  |
| 2 | 1.1 | **Design documents** | 8.75d | 2015-05-18 A | 2015-06-12 |  | 61% | 3.44d | 0d |  |  | 70h | 42.5h | 1,400 | 850 |  |
| 3 | 1.1.1 | Use cases | 30h | 2015-05-18 A | 2015-05-29 |  | 75% | 7.5h | 2.5d | 0d | Brandon | 30h | 22.5h | 600 | 450 | 20 |
| 4 | 1.1.2 | Sequence Diagrams | 30h | 2015-05-30 A | 2015-06-07 | 3 | 50% | 15h | 0.62d | 0d | Brandon | 30h | 15h | 600 | 300 | 15 |
| 5 | 1.1.3 | Class Diagrams | 10h | 2015-06-08 A | 2015-06-12 | 4 | 50% | 5h | 0d |  | Brandon | 10h | 5h | 200 | 100 |  |
| 6 | 1.2 | **Production Schedule** | 8.38d | 2015-06-15 | 2015-06-25 | 2 |  |  | 0d |  |  | 67h |  | 1,340 |  |  |
| 7 | 1.2.1 | **Production Window** | 1.88d | 2015-06-15 | 2015-06-16 |  |  |  | 0d |  |  | 15h |  | 300 |  |  |
| 8 | 1.2.1.1 | Create controls | 15h | 2015-06-15 | 2015-06-16 |  |  |  | 0d |  | Brandon | 15h |  | 300 |  |  |
| 9 | 1.2.2 | **Press configuration** | 4d | 2015-06-16 | 2015-06-22 | 7 |  |  | 0d |  |  | 32h |  | 640 |  |  |
| 10 | 1.2.2.1 | Plate configuration manual editing | 20h | 2015-06-16 | 2015-06-19 |  |  |  | 0d |  | Brandon | 20h |  | 400 |  |  |
| 11 | 1.2.2.2 | Rough item list to run | 12h | 2015-06-19 | 2015-06-22 | 10 |  |  | 0d |  | Brandon | 12h |  | 240 |  |  |
| 12 | 1.2.3 | Testing | 20h | 2015-06-22 | 2015-06-25 | 9 |  |  | 0d |  | Brandon | 20h |  | 400 |  |  |
| 13 | 1.3 | **Update Coating Schedule** | 19.75d | 2015-06-25 | 2015-07-23 | 6 |  |  | 0d |  |  | 158h |  | 3,160 |  |  |
| 14 | 1.3.1 | Running totals of commonly used WiP items | 30h | 2015-06-25 | 2015-07-01 |  |  |  | 0d |  | Brandon | 30h |  | 600 |  |  |
| 15 | 1.3.2 | Schedule paint trial | 15h | 2015-07-01 | 2015-07-02 | 14 |  |  | 0d |  | Brandon | 15h |  | 300 |  |  |
| 16 | 1.3.3 | Add production time option for schedule in place of units | 20h | 2015-07-03 | 2015-07-07 | 15 |  |  | 0d |  | Brandon | 20h |  | 400 |  |  |
| 17 | 1.3.4 | Testing | 15h | 2015-07-07 | 2015-07-09 | 16 |  |  | 0d |  | Brandon | 15h |  | 300 |  |  |
| 18 | 1.3.5 | **Warehouse Tracking** | 5d | 2015-07-09 | 2015-07-16 | 17 |  |  | 0d |  |  | 40h |  | 800 |  |  |
| 19 | 1.3.5.1 | Auto tracking of WiP inventory from estimated production | 20h | 2015-07-09 | 2015-07-13 |  |  |  | 0d |  | Brandon | 20h |  | 400 |  |  |
| 20 | 1.3.5.2 | Marking warehouse stock to be purged | 10h | 2015-07-13 | 2015-07-15 | 19 |  |  | 0d |  | Brandon | 10h |  | 200 |  |  |
| 21 | 1.3.5.3 | Testing | 10h | 2015-07-15 | 2015-07-16 | 20 |  |  | 0d |  | Brandon | 10h |  | 200 |  |  |
| 22 | 1.3.6 | **Production** | 4.75d | 2015-07-16 | 2015-07-23 | 18 |  |  | 0d |  |  | 38h |  | 760 |  |  |
| 23 | 1.3.6.1 | Efficiency tracking from standards | 20h | 2015-07-16 | 2015-07-20 |  |  |  | 0d |  | Brandon | 20h |  | 400 |  |  |
| 24 | 1.3.6.2 | Set machine conflicts | 10h | 2015-07-20 | 2015-07-22 | 23 |  |  | 0d |  | Brandon | 10h |  | 200 |  |  |
| 25 | 1.3.6.3 | Testing | 8h | 2015-07-22 | 2015-07-23 | 24 |  |  | 0d |  | Brandon | 8h |  | 160 |  |  |

| ID | WBS | Task | Duration | Start | Finish | Predecessors | Total slack | Resources | Work | Cost |
| --- | --- | --- | --- | --- | --- | --- | --- | --- | --- | --- |
| 26 | 1.4 | **Update LumberTrack interface** | 3.62d? | 2015-07-23 | 2015-07-28 | 13 | 0d |  | 29h | 580 |
| 27 | 1.4.1 | Write nightly exports | 15h? | 2015-07-23 | 2015-07-24 |  | 0d | Brandon | 15h | 300 |
| 28 | 1.4.2 | Update products to use new product code and dimentions | 8h | 2015-07-27 | 2015-07-27 | 27 | 0d | Brandon | 8h | 160 |
| 29 | 1.4.3 | Testing | 6h | 2015-07-28 | 2015-07-28 | 28 | 0d | Brandon | 6h | 120 |
| 30 | 1.5 | **Schedule Generation** | 14.75d | 2015-07-28 | 2015-08-24 | 26 | 0d |  | 118h | 2,360 |
| 31 | 1.5.1 | **Priority setting of the following values:** | 11d | 2015-07-28 | 2015-08-18 |  | 0d |  | 88h | 1,760 |
| 32 | 1.5.1.1 | Sales prediction | 6h | 2015-07-28 | 2015-07-29 |  | 0d | Brandon | 6h | 120 |
| 33 | 1.5.1.2 | Shake texture only on Friday | 8h | 2015-07-29 | 2015-07-30 | 32 | 0d | Brandon | 8h | 160 |
| 34 | 1.5.1.3 | 10 day turnover on new orders | 20h | 2015-07-30 | 2015-08-03 | 33 | 0d | Brandon | 20h | 400 |
| 35 | 1.5.1.4 | Items should be made in decreasing width | 8h | 2015-08-04 | 2015-08-04 | 34 | 0d | Brandon | 8h | 160 |
| 36 | 1.5.1.5 | Run unprimed before primed | 15h | 2015-08-05 | 2015-08-06 | 35 | 0d | Brandon | 15h | 300 |
| 37 | 1.5.1.6 | Lam line is not run with first pass | 15h | 2015-08-06 | 2015-08-14 | 36 | 0d | Brandon | 15h | 300 |
| 38 | 1.5.1.7 | Waste is kept within minimum and maximum values | 8h | 2015-08-14 | 2015-08-17 | 37 | 0d | Brandon | 8h | 160 |
| 39 | 1.5.1.8 | Prioritize WiP item use that are marked "purge" | 8h | 2015-08-17 | 2015-08-18 | 38 | 0d | Brandon | 8h | 160 |
| 40 | 1.5.2 | Testing | 30h | 2015-08-18 | 2015-08-24 | 31 | 0d | Brandon | 30h | 600 |
| 41 | 1.6 | **Program Manual** | 16.62d | 2015-08-24 | 2015-09-16 | 30 | 0d |  | 133h |  |
| 42 | 1.6.1 | **Scope indentification** | 1.25d | 2015-08-24 | 2015-08-25 |  | 0d |  | 10h |  |
| 43 | 1.6.1.1 | Identify tasks that the user will perform | 10h | 2015-08-24 | 2015-08-25 |  | 0d |  | 10h |  |
| 44 | 1.6.2 | **Content** | 13.12d | 2015-08-27 | 2015-09-15 | 50 | 0d |  | 90h |  |
| 45 | 1.6.2.1 | Rough draft | 60h | 2015-08-27 | 2015-09-07 | 50 | 0d |  | 60h |  |
| 46 | 1.6.2.2 | Final document revision | 30h | 2015-09-09 | 2015-09-15 | 48 | 0d |  | 30h |  |
| 47 | 1.6.3 | **Images** | 1.88d | 2015-09-07 | 2015-09-09 | 45 | 0d |  | 15h |  |
| 48 | 1.6.3.1 | Capture/Editing | 15h | 2015-09-07 | 2015-09-09 |  | 0d |  | 15h |  |
| 49 | 1.6.4 | **Layout** | 15.38d | 2015-08-25 | 2015-09-16 |  | 0d |  | 18h |  |
| 50 | 1.6.4.1 | Template creation | 10h | 2015-08-25 | 2015-08-26 | 42 | 0d |  | 10h |  |
| 51 | 1.6.4.2 | Revision | 8h | 2015-09-15 | 2015-09-16 | 46 | 0d |  | 8h |  |
