# Hardboard phase 1 1-2-15

Schedule from MS Project, 2015-05-18 to 2015-09-25, status date 2015-06-12, costs in $, A marks actual dates.

## Calendars

- Student Calendar: Mon-Fri 08:00-12:00, 13:00-17:00; Sat-Sun off. Exceptions (off unless hours are given): 2015-08-07 to 2015-08-12 (Honeymoon).

## Resources

| Resource | Group | Rate |
| --- | --- | --- |
| Brandon | Developer | 20 |

## Schedule

| ID | WBS | Task | Duration | Start | Finish | Predecessors | Complete | Remaining | Total slack | Resources | Work | Actual work | Cost | Actual cost | Total Hours Worked |
| --- | --- | --- | --- | --- | --- | --- | --- | --- | --- | --- | --- | --- | --- | --- | --- |
| 1 | 1 | **Hardboard Phase 3** | 79.5d | 2015-05-18 A | 2015-09-25 |  | 85% | 11.63d | 0d |  | 656h | 560h | 9,580 | 8,720 |  |
| 2 | 1.1 | **Design documents** | 8.75d | 2015-05-18 A | 2015-06-12 A |  | 100% |  |  |  | 70h | 70h | 1,400 | 1,400 |  |
| 3 | 1.1.1 | Use cases | 30h | 2015-05-18 A | 2015-05-29 A |  | 100% |  |  | Brandon | 30h | 30h | 600 | 600 | 30 |
| 4 | 1.1.2 | Sequence Diagrams | 30h | 2015-05-30 A | 2015-06-07 A | 3 | 100% |  |  | Brandon | 30h | 30h | 600 | 600 | 30 |
| 5 | 1.1.3 | Class Diagrams | 10h | 2015-06-08 A | 2015-06-12 A | 4 | 100% |  |  | Brandon | 10h | 10h | 200 | 200 | 10 |
| 6 | 1.2 | **Production Schedule** | 11.38d | 2015-06-15 A | 2015-06-30 A | 2 | 100% |  |  |  | 111h | 111h | 1,340 | 1,340 |  |
| 7 | 1.2.1 | Add press shift configuration | 10h | 2015-06-15 A | 2015-06-16 A |  | 100% |  |  |  | 10h | 10h |  |  | 10 |
| 8 | 1.2.2 | **Production Window** | 1.88d | 2015-06-16 A | 2015-06-18 A | 7 | 100% |  |  |  | 15h | 15h | 300 | 300 |  |
| 9 | 1.2.2.1 | Create controls | 15h | 2015-06-16 A | 2015-06-18 A |  | 100% |  |  | Brandon | 15h | 15h | 300 | 300 | 15 |
| 10 | 1.2.3 | **Press configuration** | 5.75d | 2015-06-18 A | 2015-06-25 A | 8 | 100% |  |  |  | 46h | 46h | 640 | 640 |  |
| 11 | 1.2.3.1 | Schedule pait trial (Manual or selected) | 8h | 2015-06-18 A | 2015-06-19 A |  | 100% |  |  |  | 8h | 8h |  |  |  |
| 12 | 1.2.3.2 | Set max number of plate changes per week | 2h | 2015-06-19 A | 2015-06-19 A | 11 | 100% |  |  |  | 2h | 2h |  |  |  |
| 13 | 1.2.3.3 | Set day(s) of week plate changes may happen | 4h | 2015-06-19 A | 2015-06-19 A | 12 | 100% |  |  |  | 4h | 4h |  |  |  |
| 14 | 1.2.3.4 | Plate configuration manual editing | 20h | 2015-06-19 A | 2015-06-24 A | 13 | 100% |  |  | Brandon | 20h | 20h | 400 | 400 | 20 |
| 15 | 1.2.3.5 | Rough item list to run | 12h | 2015-06-24 A | 2015-06-25 A | 14 | 100% |  |  | Brandon | 12h | 12h | 240 | 240 | 12 |
| 16 | 1.2.4 | Testing | 20h | 2015-06-25 A | 2015-06-30 A | 10 | 100% |  |  | Brandon | 20h | 20h | 400 | 400 | 20 |
| 17 | 1.2.5 | **Press Schedule requested changes** | 2.5d | 2015-06-15 A | 2015-06-17 A |  | 100% |  |  |  | 20h | 20h |  |  |  |
| 18 | 1.2.5.1 | Create excel export for press schedule | 20h | 2015-06-15 A | 2015-06-17 A |  | 100% |  |  |  | 20h | 20h |  |  | 20 |
| 19 | 1.3 | **Update Coating Schedule** | 19.12d | 2015-06-30 A | 2015-07-27 A | 6 | 100% |  |  |  | 153h | 153h | 3,060 | 3,060 |  |
| 20 | 1.3.1 | Running totals of commonly used WiP items | 30h | 2015-06-30 A | 2015-07-06 A |  | 100% |  |  | Brandon | 30h | 30h | 600 | 600 | 30 |
| 21 | 1.3.2 | Schedule paint trial (Manual or selected item) | 10h | 2015-07-06 A | 2015-07-07 A | 20 | 100% |  |  | Brandon | 10h | 10h | 200 | 200 | 10 |
| 22 | 1.3.3 | Add production time option for schedule in place of units | 20h | 2015-07-07 A | 2015-07-09 A | 21 | 100% |  |  | Brandon | 20h | 20h | 400 | 400 | 20 |
| 23 | 1.3.4 | Testing | 15h | 2015-07-09 A | 2015-07-13 A | 22 | 100% |  |  | Brandon | 15h | 15h | 300 | 300 | 15 |
| 24 | 1.3.5 | **Warehouse Tracking** | 5d | 2015-07-13 A | 2015-07-20 A | 23 | 100% |  |  |  | 40h | 40h | 800 | 800 |  |
| 25 | 1.3.5.1 | Auto tracking of WiP inventory from estimated production | 20h | 2015-07-13 A | 2015-07-16 A |  | 100% |  |  | Brandon | 20h | 20h | 400 | 400 | 20 |
| 26 | 1.3.5.2 | Marking warehouse stock to be purged | 10h | 2015-07-16 A | 2015-07-17 A | 25 | 100% |  |  | Brandon | 10h | 10h | 200 | 200 | 10 |
| 27 | 1.3.5.3 | Testing | 10h | 2015-07-17 A | 2015-07-20 A | 26 | 100% |  |  | Brandon | 10h | 10h | 200 | 200 | 10 |

| ID | WBS | Task | Duration | Start | Finish | Predecessors | Complete | Remaining | Total slack | Free slack | Resources | Work | Actual work | Cost | Actual cost | Total Hours Worked | Hours Left | Hours Worked This Week |
| --- | --- | --- | --- | --- | --- | --- | --- | --- | --- | --- | --- | --- | --- | --- | --- | --- | --- | --- |
| 28 | 1.3.6 | **Production** | 4.75d | 2015-07-20 A | 2015-07-27 A | 24 | 100% |  |  |  |  | 38h | 38h | 760 | 760 |  |  |  |
| 29 | 1.3.6.1 | Efficiency tracking from standards | 20h | 2015-07-20 A | 2015-07-23 A |  | 100% |  |  |  | Brandon | 20h | 20h | 400 | 400 | 20 |  |  |
| 30 | 1.3.6.2 | Set machine conflicts | 10h | 2015-07-23 A | 2015-07-24 A | 29 | 100% |  |  |  | Brandon | 10h | 10h | 200 | 200 | 10 |  |  |
| 31 | 1.3.6.3 | Testing | 8h | 2015-07-24 A | 2015-07-27 A | 30 | 100% |  |  |  | Brandon | 8h | 8h | 160 | 160 |  |  |  |
| 32 | 1.4 | **Update LumberTrack interface** | 3.62d | 2015-07-27 A | 2015-07-31 | 19 | 38% | 2.25d | 26.88d | 0d |  | 29h | 11h | 580 | 220 |  |  |  |
| 33 | 1.4.1 | Write nightly exports | 15h | 2015-07-27 | 2015-07-29 |  |  |  | 28.62d |  | Brandon | 15h |  | 300 |  |  | 15 |  |
| 34 | 1.4.2 | Update products to use new product code and dimentions | 8h | 2015-07-29 A | 2015-07-30 A | 33 | 100% |  |  |  | Brandon | 8h | 8h | 160 | 160 |  |  |  |
| 35 | 1.4.3 | Testing | 6h | 2015-07-30 A | 2015-07-31 | 34 | 50% | 3h | 26.88d |  | Brandon | 6h | 3h | 120 | 60 |  |  |  |
| 36 | 1.5 | **Schedule Generation** | 20d | 2015-07-31 A | 2015-09-03 | 32 | 84% | 3.12d | 10d | 0d |  | 160h | 135h | 3,200 | 2,700 |  |  |  |
| 37 | 1.5.1 | **Priority setting of the following values:** | 12.5d | 2015-07-31 A | 2015-08-24 |  | 90% | 1.25d | 15.62d | 0d |  | 100h | 90h | 2,000 | 1,800 |  |  |  |
| 38 | 1.5.1.1 | Sales prediction | 6h | 2015-07-31 A | 2015-07-31 A |  | 100% |  |  |  | Brandon | 6h | 6h | 120 | 120 |  |  |  |
| 39 | 1.5.1.2 | Shake texture only on Friday | 8h | 2015-07-31 A | 2015-08-03 A | 38 | 100% |  |  |  | Brandon | 8h | 8h | 160 | 160 |  |  |  |
| 40 | 1.5.1.3 | 10 day turnover on new orders | 20h | 2015-08-03 A | 2015-08-06 A | 39 | 100% |  |  |  | Brandon | 20h | 20h | 400 | 400 | 20 |  |  |
| 41 | 1.5.1.4 | Items should be made in decreasing width | 8h | 2015-08-06 A | 2015-08-13 A | 40 | 100% |  |  |  | Brandon | 8h | 8h | 160 | 160 |  |  |  |
| 42 | 1.5.1.5 | Run unprimed before primed | 15h | 2015-08-13 A | 2015-08-17 A | 41 | 100% |  |  |  | Brandon | 15h | 15h | 300 | 300 | 15 |  |  |
| 43 | 1.5.1.6 | Lam line is not run with first pass | 15h | 2015-08-17 A | 2015-08-19 A | 42 | 100% |  |  |  | Brandon | 15h | 15h | 300 | 300 | 15 |  |  |
| 44 | 1.5.1.7 | Waste is kept within minimum and maximum values | 20h | 2015-08-19 A | 2015-08-21 | 43 | 50% | 10h | 16.62d |  | Brandon | 20h | 10h | 400 | 200 |  | 12 |  |
| 45 | 1.5.1.8 | Prioritize WiP item use that are marked "purge" | 8h | 2015-08-21 A | 2015-08-24 A | 44 | 100% |  |  |  | Brandon | 8h | 8h | 160 | 160 |  |  |  |
| 46 | 1.5.2 | Testing | 60h | 2015-08-24 A | 2015-09-03 | 37 | 75% | 15h | 10d |  | Brandon | 60h | 45h | 1,200 | 900 | 51 |  |  |
| 47 | 1.6 | **Program Manual** | 16.62d | 2015-09-03 A | 2015-09-25 | 36 | 60% | 6.62d | 0d |  |  | 133h | 80h |  |  |  |  |  |
| 48 | 1.6.1 | **Scope indentification** | 1.25d | 2015-09-03 A | 2015-09-04 A |  | 100% |  |  |  |  | 10h | 10h |  |  |  |  |  |
| 49 | 1.6.1.1 | Identify tasks that the user will perform | 10h | 2015-09-03 A | 2015-09-04 A |  | 100% |  |  |  |  | 10h | 10h |  |  | 10 |  |  |
| 50 | 1.6.2 | **Content** | 13.12d | 2015-09-07 A | 2015-09-24 | 56 | 50% | 6.56d | 1d |  |  | 90h | 45h |  |  |  |  |  |
| 51 | 1.6.2.1 | Rough draft | 60h | 2015-09-07 A | 2015-09-17 | 56 | 75% | 15h | 6.62d |  |  | 60h | 45h |  |  | 50 | 10 | 25 |
| 52 | 1.6.2.2 | Final document revision | 30h | 2015-09-21 | 2015-09-24 | 54 |  |  | 0d |  |  | 30h |  |  |  |  | 30 |  |

| ID | WBS | Task | Duration | Start | Finish | Predecessors | Complete | Remaining | Total slack | Work | Actual work | Total Hours Worked | Hours Worked This Week |
| --- | --- | --- | --- | --- | --- | --- | --- | --- | --- | --- | --- | --- | --- |
| 53 | 1.6.3 | **Images** | 1.88d | 2015-09-17 A | 2015-09-18 A | 51 | 100% |  |  | 15h | 15h |  |  |
| 54 | 1.6.3.1 | Capture/Editing | 15h | 2015-09-17 A | 2015-09-18 A |  | 100% |  |  | 15h | 15h | 15 | 15 |
| 55 | 1.6.4 | **Layout** | 15.38d | 2015-09-04 A | 2015-09-25 |  | 56% | 6.83d | 0d | 18h | 10h |  |  |
| 56 | 1.6.4.1 | Template creation | 10h | 2015-09-04 A | 2015-09-07 A | 48 | 100% |  |  | 10h | 10h | 10 |  |
| 57 | 1.6.4.2 | Revision | 8h | 2015-09-24 | 2015-09-25 | 52 |  |  | 0d | 8h |  |  |  |
